# C000080230 - Auditorium Upgrade B000

Schedule from Primavera P6, 2021-09-15 to 2022-10-14, data date 2021-09-15.

## Calendars

- Corporate - Standard Full Time: Mon-Fri 08:00-15:59; Sat-Sun off.
- 7-Day Workweek: Mon-Sun 08:00-15:59.

## Schedule

| ID | WBS | Activity | Type | Duration | Start | Finish | Predecessors |
| --- | --- | --- | --- | --- | --- | --- | --- |
|  | 1 | **Milestones** |  |  | 2021-09-15 | 2022-10-14 |  |
| 100 |  | NTP | milestone | 0d | 2021-09-15 | 2021-09-15 |  |
| 400 |  | Inspections |  | 10d | 2022-09-01 | 2022-09-14 | 285, 335 |
| 410 |  | Substantial Completion | milestone | 0d | 2022-09-14 | 2022-09-14 | 400 |
| 420 |  | Punchlist Work & Project Closeout |  | 22d | 2022-09-15 | 2022-10-14 | 410 |
| 440 |  | Final Completion | milestone | 0d | 2022-10-14 | 2022-10-14 | 420 |
|  | _PRE | **Pre-Construction** |  |  | 2021-09-29 | 2022-01-07 |  |
|  | 1 | **Permits and Procedures** |  |  | 2021-09-29 | 2021-12-14 |  |
| 110 |  | UFT Meeting | milestone | 0d | 2021-09-29 | 2021-09-29 | 100 FS+10d |
| 115 |  | SAF Submission |  | 29d | 2021-10-14 | 2021-11-23 | 110 FS+11d |
| 120 |  | Site Safety Plane Submission/Approval |  | 29d | 2021-10-14 | 2021-11-23 | 115 SS |
| 125 |  | Submission of SOV |  | 15d | 2021-11-24 | 2021-12-14 | 115, 120 FS-7d |
| 130 |  | Temporary Fence Permit |  | 15d | 2021-11-24 | 2021-12-14 | 125 SS |
| 135 |  | Submission/ Approval of PW2 for GC |  | 15d | 2021-11-24 | 2021-12-14 | 130 SS |
| 140 |  | Submission/ Approval of Baseline Schedule |  | 15d | 2021-11-24 | 2021-12-14 | 135 SS |
| 145 |  | Submission/ Approval of Quality Control Plan (QCP) |  | 15d | 2021-11-24 | 2021-12-14 | 140 SS |
|  | 2 | **Submission, Approval & Procurement** |  |  | 2021-11-24 | 2022-01-07 |  |
| 150 |  | Submission/ Approval of Auditorium Fixed Seating |  | 33d | 2021-11-24 | 2022-01-07 | 145 SS |
| 155 |  | Submission/ Approval of Division 8, Submittals and Shop Drawing |  | 33d | 2021-11-24 | 2022-01-07 | 150 SS |
| 160 |  | Submission/ Approval of Division 10, Submittals and Shop Drawing |  | 33d | 2021-11-24 | 2022-01-07 | 155 SS |
| 165 |  | Submission/ Approval of Ceramic Tiles and VCT Sheeting Submittals |  | 33d | 2021-11-24 | 2022-01-07 | 160 SS |
| 170 |  | Submission/ Approval of of Division 9, Submittals and Shop Drawings |  | 33d | 2021-11-24 | 2022-01-07 | 165 SS |
| 175 |  | Submission/ Approval of Electrical Submittals |  | 33d | 2021-11-24 | 2022-01-07 | 170 SS |
| 180 |  | Submission/ Approval of Plumbing Submittals |  | 33d | 2021-11-24 | 2022-01-07 | 175 SS |

| ID | WBS | Activity | Duration | Start | Finish | Predecessors | Calendar |
| --- | --- | --- | --- | --- | --- | --- | --- |
|  | _CON | **Construction** |  | 2021-12-15 | 2022-08-31 |  |  |
|  | 1 | **Auditorium** |  | 2021-12-15 | 2022-08-31 |  |  |
| 200 |  | Mobilization | 15d | 2021-12-15 | 2022-01-04 | 125, 130, 135, 140, 145 |  |
| 205 |  | Staging Area, Toilet Facility, COVID Station Set-Up, Dumpster Set-Up | 15d | 2021-12-15 | 2022-01-04 | 200 SS, 200 FF |  |
| 210 |  | Removal and Discarding Existing Auditorium Seating | 15d | 2022-01-05 | 2022-01-25 | 205 |  |
| 215 |  | Remove All Stage Curtain | 15d | 2022-01-05 | 2022-01-25 | 210 SS, 210 FF |  |
| 225 |  | Abatement to Remove Flooring and Install Furring | 5d | 2022-01-26 | 2022-01-30 | 215 | 7-Day Workweek |
| 230 |  | Electrical Demolish Work in the Auditorium | 15d | 2022-01-26 | 2022-02-15 | 215, 225 SS |  |
| 240 |  | Framing and Sheetrock the Stage Walls | 17d | 2022-01-26 | 2022-02-17 | 150, 155, 160, 165, 170, 175, 180, 230 SS |  |
| 235 |  | Electrical Inspection | 5d | 2022-02-16 | 2022-02-22 | 230 |  |
| 245 |  | Repair Auditorium Walls and Painting | 20d | 2022-02-18 | 2022-03-17 | 240 |  |
| 290 |  | Install Steel Railing | 5d | 2022-06-02 | 2022-06-08 | 245 FS+54d |  |
| 300 |  | Install New Star Stairs Railing | 5d | 2022-06-09 | 2022-06-15 | 290 |  |
| 305 |  | Install Firestopping | 5d | 2022-06-16 | 2022-06-22 | 300 |  |
| 310 |  | Electrical Contractor to Install Lighting and Fixtures | 15d | 2022-06-23 | 2022-07-13 | 235, 305 |  |
| 315 |  | Install New Wood Panel to Stage Front | 5d | 2022-07-14 | 2022-07-20 | 310 |  |
| 320 |  | Repair Auditorium Concrete Floor and Painting Work | 5d | 2022-07-14 | 2022-07-20 | 315 SS |  |
| 325 |  | Install Auditorium Seating | 10d | 2022-07-21 | 2022-08-03 | 320 |  |
| 330 |  | Install Floor Sheeting | 10d | 2022-08-04 | 2022-08-17 | 325 |  |
| 335 |  | Install Sign Plate | 10d | 2022-08-18 | 2022-08-31 | 330 |  |
|  | 2 | **Bathrooms** |  | 2022-03-18 | 2022-06-09 |  |  |
| 250 |  | Mobilizing and Demolishing Bathroom | 5d | 2022-03-18 | 2022-03-24 | 245 |  |
| 255 |  | Plumbing Work for bathroom, Demo and Roughing Work | 20d | 2022-03-25 | 2022-04-21 | 250 |  |
| 260 |  | Plumbing Inspections | 5d | 2022-04-22 | 2022-04-28 | 255 |  |
| 265 |  | Installaton of Steel Door Frame in the Bathroom | 5d | 2022-04-22 | 2022-04-28 | 260 SS |  |
| 270 |  | Installation of Wood Door and Hardware | 5d | 2022-04-29 | 2022-05-05 | 265 |  |
| 275 |  | Installing Framing and Dheetrock in the bathroom | 5d | 2022-05-06 | 2022-05-12 | 270 |  |
| 280 |  | Installing Wall Tiles | 10d | 2022-05-13 | 2022-05-26 | 275 |  |
| 285 |  | Painting and Install bathroom Accessories | 10d | 2022-05-27 | 2022-06-09 | 280 |  |
